# Gantt

Schedule from MS Project, 2025-02-17 to 2025-06-06, A marks actual dates.

## Calendars

- Estándar: Mon-Fri 09:00-13:00, 15:00-19:00; Sat-Sun off.

## Resources

| Resource |
| --- |
| Adrián García Tapia |

## Schedule

| ID | WBS | Task | Duration | Start | Finish | Predecessors | Complete | Remaining | Total slack | Constraint |
| --- | --- | --- | --- | --- | --- | --- | --- | --- | --- | --- |
| 1 | 1 | **TFG** | 80d | 2025-02-17 A | 2025-06-06 |  | 22% | 62.17d | 0d |  |
| 2 | 1.1 | **Inicio** | 7d | 2025-02-17 A | 2025-02-25 |  | 93% | 0.49d | 0d |  |
| 3 | 1.1.1 | **Buscar estado del arte** | 4d | 2025-02-17 A | 2025-02-20 A |  | 100% |  |  |  |
| 4 | 1.1.1.1 | Buscar estado del arte Superresolución | 4d | 2025-02-17 A | 2025-02-20 A |  | 100% |  |  | start no earlier than 2025-02-17 |
| 5 | 1.1.1.2 | Buscar estado del arte Superresolución Gaussian Splatting | 4d | 2025-02-17 A | 2025-02-20 A |  | 100% |  |  |  |
| 6 | 1.1.1.3 | Buscar estado del arte Superresolución Remote Sensing | 4d | 2025-02-17 A | 2025-02-20 A |  | 100% |  |  |  |
| 7 | 1.1.2 | **Planificar trabajo** | 2d | 2025-02-21 A | 2025-02-24 A | 3 | 100% |  |  |  |
| 8 | 1.1.2.1 | Definir objetivos | 1d | 2025-02-21 A | 2025-02-21 A |  | 100% |  |  |  |
| 9 | 1.1.2.2 | Definir metodología | 1d | 2025-02-21 A | 2025-02-21 A |  | 100% |  |  |  |
| 10 | 1.1.2.3 | Dividir tareas | 1d | 2025-02-24 A | 2025-02-24 A | 9 | 100% |  |  |  |
| 11 | 1.1.2.4 | Crear GitHub | 1d | 2025-02-21 A | 2025-02-21 A |  | 100% |  |  |  |
| 12 | 1.1.3 | **Redactar primer informe** | 7d | 2025-02-17 A | 2025-02-25 |  | 77% | 1.6d | 0d |  |
| 13 | 1.1.3.1 | Redactar informe | 6d | 2025-02-17 A | 2025-02-24 |  | 90% | 0.6d | 0d |  |
| 14 | 1.1.3.2 | Revisar informe | 1d | 2025-02-25 | 2025-02-25 | 13 |  |  | 0d |  |
| 15 | 1.2 | **Implementar artículo** | 45d | 2025-02-26 | 2025-04-29 | 12 |  |  | 0d |  |
| 16 | 1.2.1 | **Implementar RGB** | 34d | 2025-02-26 | 2025-04-14 |  |  |  | 0d |  |
| 17 | 1.2.1.1 | Entender Condition Injection Block | 1d | 2025-02-26 | 2025-02-26 |  |  |  | 0d |  |
| 18 | 1.2.1.2 | Implementar Condition Injection Block | 3d | 2025-02-27 | 2025-03-03 | 17 |  |  | 0d |  |
| 19 | 1.2.1.3 | Entender Gaussian Interaction Block | 1d | 2025-03-04 | 2025-03-04 | 18 |  |  | 0d |  |
| 20 | 1.2.1.4 | Implementar Gaussian Interaction Block | 3d | 2025-03-05 | 2025-03-07 | 19 |  |  | 0d |  |
| 21 | 1.2.1.5 | Entender Gaussian Primary Head | 1d | 2025-03-10 | 2025-03-10 | 20 |  |  | 0d |  |
| 22 | 1.2.1.6 | Implementar Gaussian Primary Head | 3d | 2025-03-11 | 2025-03-13 | 21 |  |  | 0d |  |
| 23 | 1.2.1.7 | Entender 2D Rasterization Block | 1d | 2025-03-14 | 2025-03-14 | 22 |  |  | 0d |  |
| 24 | 1.2.1.8 | Aprender a combinar Pytorch+Cuda | 1d | 2025-03-17 | 2025-03-17 | 23 |  |  | 0d |  |
| 25 | 1.2.1.9 | Implementar 2D Rasterization | 10d | 2025-03-18 | 2025-03-31 | 24 |  |  | 0d |  |
| 26 | 1.2.1.10 | Preparar EDSR feature extractor | 2d | 2025-04-01 | 2025-04-02 | 25 |  |  | 0d |  |
| 27 | 1.2.1.11 | Conectar todos los bloques | 1d | 2025-04-03 | 2025-04-03 | 26 |  |  | 0d |  |
| 28 | 1.2.1.12 | Crear bucle de entrenamiento | 1d | 2025-04-04 | 2025-04-04 | 27 |  |  | 0d |  |
| 29 | 1.2.1.13 | Preparar Dataset RGB | 1d | 2025-04-07 | 2025-04-07 | 28 |  |  | 0d |  |
| 30 | 1.2.1.14 | Entrenar modelo | 4d | 2025-04-08 | 2025-04-11 | 29 |  |  | 0d |  |
| 31 | 1.2.1.15 | Comparar con paper original | 1d | 2025-04-14 | 2025-04-14 | 30 |  |  | 0d |  |

| ID | WBS | Task | Duration | Start | Finish | Predecessors | Total slack |
| --- | --- | --- | --- | --- | --- | --- | --- |
| 32 | 1.2.2 | **Implementar Multiespectral** | 11d | 2025-04-15 | 2025-04-29 | 16 | 0d |
| 33 | 1.2.2.1 | Adaptar Condition Injection Block | 1d | 2025-04-15 | 2025-04-15 |  | 0d |
| 34 | 1.2.2.2 | Adaptar Gaussian Interaction Block | 1d | 2025-04-16 | 2025-04-16 | 33 | 0d |
| 35 | 1.2.2.3 | Adaptar Gaussian Splatting Head | 1d | 2025-04-17 | 2025-04-17 | 34 | 0d |
| 36 | 1.2.2.4 | Adaptar 2D Rasterization | 1d | 2025-04-18 | 2025-04-18 | 35 | 0d |
| 37 | 1.2.2.5 | Adaptar EDSR feature extractor | 1d | 2025-04-21 | 2025-04-21 | 36 | 0d |
| 38 | 1.2.2.6 | Preparar Dataset MS para EDSR | 1d | 2025-04-22 | 2025-04-22 | 37 | 0d |
| 39 | 1.2.2.7 | Preparar Dataset MS para GSASR | 1d | 2025-04-23 | 2025-04-23 | 38 | 0d |
| 40 | 1.2.2.8 | Crear bucle de entrenamiento para EDSR | 1d | 2025-04-24 | 2025-04-24 | 39 | 0d |
| 41 | 1.2.2.9 | Entrenar EDSR | 1d | 2025-04-25 | 2025-04-25 | 40 | 0d |
| 42 | 1.2.2.10 | Entrenar GSASR | 1d | 2025-04-28 | 2025-04-28 | 41 | 0d |
| 43 | 1.2.2.11 | Comparar con modelo RGB | 1d | 2025-04-29 | 2025-04-29 | 42 | 0d |
| 44 | 1.3 | **Comparar con SotA** | 21d | 2025-04-30 | 2025-05-28 | 15 | 0d |
| 45 | 1.3.1 | **Comparar con CiaoSR** | 7d | 2025-04-30 | 2025-05-08 |  | 0d |
| 46 | 1.3.1.1 | Adaptar CiaoSR a MS | 1d | 2025-04-30 | 2025-04-30 |  | 0d |
| 47 | 1.3.1.2 | Crear bucle de entrenamiento | 1d | 2025-05-01 | 2025-05-01 | 46 | 0d |
| 48 | 1.3.1.3 | Entrenar CiaoSR | 4d | 2025-05-02 | 2025-05-07 | 47 | 0d |
| 49 | 1.3.1.4 | Comparar con GSASR | 1d | 2025-05-08 | 2025-05-08 | 48 | 0d |
| 50 | 1.3.2 | **Comparar Transformer SotA** | 7d | 2025-05-09 | 2025-05-19 | 45 | 0d |
| 51 | 1.3.2.1 | Adaptar Transformer a MS | 1d | 2025-05-09 | 2025-05-09 |  | 0d |
| 52 | 1.3.2.2 | Crear bucle de entrenamiento | 1d | 2025-05-12 | 2025-05-12 | 51 | 0d |
| 53 | 1.3.2.3 | Entrenar Transformer | 4d | 2025-05-13 | 2025-05-16 | 52 | 0d |
| 54 | 1.3.2.4 | Comparar con GSASR | 1d | 2025-05-19 | 2025-05-19 | 53 | 0d |
| 55 | 1.3.3 | **Comparar con Difusión SotA** | 7d | 2025-05-20 | 2025-05-28 | 50 | 0d |
| 56 | 1.3.3.1 | Adaptar Difusión a MS | 1d | 2025-05-20 | 2025-05-20 |  | 0d |
| 57 | 1.3.3.2 | Crear bucle de entrenamiento | 1d | 2025-05-21 | 2025-05-21 | 56 | 0d |
| 58 | 1.3.3.3 | Entrenar Difusión | 4d | 2025-05-22 | 2025-05-27 | 57 | 0d |
| 59 | 1.3.3.4 | Comparar con GSASR | 1d | 2025-05-28 | 2025-05-28 | 58 | 0d |

| ID | WBS | Task | Duration | Start | Finish | Predecessors | Total slack |
| --- | --- | --- | --- | --- | --- | --- | --- |
| 60 | 1.4 | **Combinar HFN con GSASR** | 7d | 2025-05-29 | 2025-06-06 | 44 | 0d |
| 61 | 1.4.1 | **HFN + GSASR** | 7d | 2025-05-29 | 2025-06-06 |  | 0d |
| 62 | 1.4.1.1 | Preparar HFN | 1d | 2025-05-29 | 2025-05-29 |  | 0d |
| 63 | 1.4.1.2 | Crear bucle de entrenamiento | 1d | 2025-05-30 | 2025-05-30 | 62 | 0d |
| 64 | 1.4.1.3 | Entrenar HFN | 4d | 2025-06-02 | 2025-06-05 | 63 | 0d |
| 65 | 1.4.1.4 | Crear pipeline combinada | 1d | 2025-06-06 | 2025-06-06 | 64 | 0d |
